# スケジュール_TWLSystemMenu

Schedule from MS Project, 2008-02-08 to 2008-02-08.
莉ｻ螟ｩ蝣よｪ蠑丈ｼ夂､ｾ

## Calendars

- 標準: Mon-Fri 08:00-12:00, 13:00-17:00; Sat-Sun off.

## Schedule

| ID | WBS | Task | Duration | Start | Finish | Total slack |
| --- | --- | --- | --- | --- | --- | --- |
| 2 | 1 | UIGランチャー | 1d? | 2008-02-08 | 2008-02-08 | 0d |
| 3 | 2 | **REDランチャー** | 1d? | 2008-02-08 | 2008-02-08 | 0d |
| 4 | 2.1 | **アプリ起動** | 1d? | 2008-02-08 | 2008-02-08 | 0d |
| 5 | 2.1.1 | **起動時のプロパティ** | 1d? | 2008-02-08 | 2008-02-08 | 0d |
| 6 | 2.1.1.1 | 鍵の引渡し | 1d? | 2008-02-08 | 2008-02-08 | 0d |
| 7 | 2.1.1.2 | NANDファイルのアクセス制限 | 1d? | 2008-02-08 | 2008-02-08 | 0d |
| 8 | 2.1.1.3 | カード電源状態 | 1d? | 2008-02-08 | 2008-02-08 | 0d |
| 9 | 2.1.1.4 | カード活線挿抜可否 | 1d? | 2008-02-08 | 2008-02-08 | 0d |
| 10 | 2.1.1.5 | SDカードアクセス可否 | 1d? | 2008-02-08 | 2008-02-08 | 0d |
| 11 | 2.1.1.6 | Codecモード切替 | 1d? | 2008-02-08 | 2008-02-08 | 0d |
| 12 | 2.1.1.7 | SCFGレジスタロック | 1d? | 2008-02-08 | 2008-02-08 | 0d |
| 13 | 2.1.2 | **起動チェック** | 1d? | 2008-02-08 | 2008-02-08 | 0d |
| 14 | 2.1.2.1 | ペアレンタルコントロールによる起動制限 | 1d? | 2008-02-08 | 2008-02-08 | 0d |
| 15 | 2.1.2.2 | リージョン違いによる起動制限 | 1d? | 2008-02-08 | 2008-02-08 | 0d |
| 16 | 2.1.2.3 | WiFi通信対応ソフトでWiFi設定が行われているか？ | 1d? | 2008-02-08 | 2008-02-08 | 0d |
| 17 | 2.1.2.4 | EURA同意が必要なソフトで、同意が取れているか？ | 1d? | 2008-02-08 | 2008-02-08 | 0d |
| 18 | 2.1.2.5 | AGBカートリッジが必要なソフトは起動禁止 | 1d? | 2008-02-08 | 2008-02-08 | 0d |
| 19 | 2.1.3 | **アプリ認証処理** | 1d? | 2008-02-08 | 2008-02-08 | 0d |
| 20 | 2.1.3.1 | NTRアプリのR4対策 | 1d? | 2008-02-08 | 2008-02-08 | 0d |
| 21 | 2.1.3.2 | **TWLアプリ** | 1d? | 2008-02-08 | 2008-02-08 | 0d |
| 22 | 2.1.3.2.1 | カードアプリ | 1d? | 2008-02-08 | 2008-02-08 | 0d |
| 23 | 2.1.3.2.2 | NANDアプリ | 1d? | 2008-02-08 | 2008-02-08 | 0d |
| 24 | 2.1.4 | **WiFiエミュレーション** | 1d? | 2008-02-08 | 2008-02-08 | 0d |
| 25 | 2.1.4.1 | コンポーネント作成 | 1d? | 2008-02-08 | 2008-02-08 | 0d |
| 26 | 2.1.4.2 | ロード処理 | 1d? | 2008-02-08 | 2008-02-08 | 0d |
| 27 | 2.1.5 | NTR無線パッチ | 1d? | 2008-02-08 | 2008-02-08 | 0d |

| ID | WBS | Task | Duration | Start | Finish | Total slack |
| --- | --- | --- | --- | --- | --- | --- |
| 28 | 2.2 | **HWリセット制御** | 1d? | 2008-02-08 | 2008-02-08 | 0d |
| 29 | 2.2.1 | **任意アプリの直接起動** | 1d? | 2008-02-08 | 2008-02-08 | 0d |
| 30 | 2.2.1.1 | 未ロード状態のアプリ起動 | 1d? | 2008-02-08 | 2008-02-08 | 0d |
| 31 | 2.2.1.2 | メモリ上にロードされた状態のアプリ起動 | 1d? | 2008-02-08 | 2008-02-08 | 0d |
| 32 | 2.2.1.3 | NANDのTMPフォルダに一時格納された状態のアプリ起動 | 1d? | 2008-02-08 | 2008-02-08 | 0d |
| 33 | 2.2.2 | ファイル関連付けアプリ起動 | 1d? | 2008-02-08 | 2008-02-08 | 0d |
| 34 | 2.2.3 | ランチャーメニューに戻る | 1d? | 2008-02-08 | 2008-02-08 | 0d |
| 35 | 2.2.4 | カードセキュリティの解除 | 1d? | 2008-02-08 | 2008-02-08 | 0d |
| 36 | 2.3 | Hot/Coldスタート判定 | 1d? | 2008-02-08 | 2008-02-08 | 0d |
| 37 | 2.4 | TMPフォルダクリーン | 1d? | 2008-02-08 | 2008-02-08 | 0d |
| 38 | 2.5 | **本体設定データ** | 1d? | 2008-02-08 | 2008-02-08 | 0d |
| 39 | 2.5.1 | フォーマット | 1d? | 2008-02-08 | 2008-02-08 | 0d |
| 40 | 2.5.2 | API | 1d? | 2008-02-08 | 2008-02-08 | 0d |
| 41 | 2.6 | 初回バックライトON | 1d? | 2008-02-08 | 2008-02-08 | 0d |
| 42 | 2.7 | **新無線ファームロード** | 1d? | 2008-02-08 | 2008-02-08 | 0d |
| 43 | 2.7.1 | maketad.exeのバイナリファイル対応 | 1d? | 2008-02-08 | 2008-02-08 | 0d |
| 44 | 2.7.2 | **実装** | 1d? | 2008-02-08 | 2008-02-08 | 0d |
| 45 | 2.7.2.1 | 無線ライブラリ | 1d? | 2008-02-08 | 2008-02-08 | 0d |
| 46 | 2.7.2.2 | ランチャー | 1d? | 2008-02-08 | 2008-02-08 | 0d |
| 47 | 2.8 | **ショートカット起動** | 1d? | 2008-02-08 | 2008-02-08 | 0d |
| 48 | 2.8.1 | 仕様策定 | 1d? | 2008-02-08 | 2008-02-08 | 0d |
| 49 | 2.9 | アプリリスト取得 | 1d? | 2008-02-08 | 2008-02-08 | 0d |
| 50 | 2.10 | **バナー** | 1d? | 2008-02-08 | 2008-02-08 | 0d |
| 51 | 2.10.1 | 仕様策定 | 1d? | 2008-02-08 | 2008-02-08 | 0d |
| 52 | 2.10.2 | バナーコンバータ | 1d? | 2008-02-08 | 2008-02-08 | 0d |
| 53 | 2.10.3 | makebanner | 1d? | 2008-02-08 | 2008-02-08 | 0d |
| 54 | 2.10.4 | バナードライバ | 1d? | 2008-02-08 | 2008-02-08 | 0d |
| 55 | 2.10.5 | セーブバナーファイル | 1d? | 2008-02-08 | 2008-02-08 | 0d |

| ID | WBS | Task | Duration | Start | Finish | Total slack |
| --- | --- | --- | --- | --- | --- | --- |
| 56 | 2.11 | **活線挿抜** | 1d? | 2008-02-08 | 2008-02-08 | 0d |
| 57 | 2.11.1 | **ロード** | 1d? | 2008-02-08 | 2008-02-08 | 0d |
| 58 | 2.11.1.1 | NTRカード対応 | 1d? | 2008-02-08 | 2008-02-08 | 0d |
| 59 | 2.11.1.2 | TWLカード対応 | 1d? | 2008-02-08 | 2008-02-08 | 0d |
| 60 | 2.11.1.3 | カードType1,2対応 | 1d? | 2008-02-08 | 2008-02-08 | 0d |
| 61 | 2.11.1.4 | Blowfishデコード | 1d? | 2008-02-08 | 2008-02-08 | 0d |
| 62 | 2.11.2 | 表示との連動 | 1d? | 2008-02-08 | 2008-02-08 | 0d |
| 63 | 2.11.3 | 起動との連動 | 1d? | 2008-02-08 | 2008-02-08 | 0d |
| 64 | 2.11.4 | 挿抜負荷耐性 | 1d? | 2008-02-08 | 2008-02-08 | 0d |
| 65 | 2.11.5 | ARM9/ARM7対応 | 1d? | 2008-02-08 | 2008-02-08 | 0d |
| 66 | 2.11.6 | 速度チューニング | 1d? | 2008-02-08 | 2008-02-08 | 0d |
| 67 | 2.12 | **ホットスポットサーチ** | 1d? | 2008-02-08 | 2008-02-08 | 0d |
| 68 | 2.12.1 | ライブラリ作成 | 1d? | 2008-02-08 | 2008-02-08 | 0d |
| 69 | 2.12.2 | ランチャーへの組み込み | 1d? | 2008-02-08 | 2008-02-08 | 0d |
| 70 | 2.13 | バッテリエクステンション | 1d? | 2008-02-08 | 2008-02-08 | 0d |
| 71 | 3 | RED本体設定 | 1d? | 2008-02-08 | 2008-02-08 | 0d |
